# 芒市机场航显系统-进度计划WBS_V1.1

Schedule from MS Project, 2019-07-08 to 2019-08-30, A marks actual dates.

## Calendars

- 标准: Mon-Fri 08:00-12:00, 13:00-17:00; Sat-Sun off.

## Schedule

| ID | WBS | Task | Duration | Start | Finish | Complete | Total slack | Constraint |
| --- | --- | --- | --- | --- | --- | --- | --- | --- |
| 1 | 1 | **项目启动** | 1d | 2019-07-08 A | 2019-07-08 A | 100% |  |  |
| 2 | 1.1 | 内部启动，项目组成立 | 1d | 2019-07-08 A | 2019-07-08 A | 100% |  |  |
| 3 | 2 | **需求阶段** | 3d | 2019-07-09 | 2019-07-11 |  | 36d |  |
| 4 | 2.1 | 需求规格说明书 | 3d | 2019-07-09 | 2019-07-11 |  | 36d | start no earlier than 2019-07-09 |
| 5 | 3 | **设计阶段** | 5d | 2019-07-11 | 2019-07-17 |  | 32d |  |
| 6 | 3.1 | 详细设计 | 5d | 2019-07-11 | 2019-07-17 |  | 32d | start no earlier than 2019-07-11 |
| 7 | 4 | **编码和单元测试阶段** | 27d | 2019-07-09 | 2019-08-14 |  | 0d |  |
| 8 | 4.1 | **编码** | 26d | 2019-07-09 | 2019-08-13 |  | 0d |  |
| 9 | 4.1.1 | **系统管理** | 1d | 2019-07-09 | 2019-07-09 |  |  |  |
| 10 | 4.1.1.1 | 组织架构管理 | 1d | 2019-07-15 | 2019-07-15 |  | 34d | start no earlier than 2019-07-15 |
| 11 | 4.1.1.2 | 角色管理 | 1d | 2019-07-15 | 2019-07-15 |  | 34d | start no earlier than 2019-07-15 |
| 12 | 4.1.1.3 | 菜单管理 | 1d | 2019-07-15 | 2019-07-15 |  | 34d | start no earlier than 2019-07-15 |
| 13 | 4.1.1.4 | 用户管理 | 1d | 2019-07-15 | 2019-07-15 |  | 34d | start no earlier than 2019-07-15 |
| 14 | 4.1.1.5 | 数据字典管理 | 1d | 2019-07-15 | 2019-07-15 |  | 34d | start no earlier than 2019-07-15 |
| 15 | 4.1.1.6 | 操作日志管理 | 1d | 2019-07-15 | 2019-07-15 |  | 34d | start no earlier than 2019-07-15 |
| 16 | 4.1.2 | **广播管理** | 22d | 2019-07-15 | 2019-08-13 |  | 13d |  |
| 17 | 4.1.2.1 | 系统框架搭建 | 1d | 2019-07-15 | 2019-07-15 |  | 34d | start no earlier than 2019-07-15 |
| 18 | 4.1.2.2 | 数据库搭建 | 1d | 2019-07-15 | 2019-07-15 |  | 34d | start no earlier than 2019-07-15 |
| 19 | 4.1.2.3 | 登机广播 | 2d | 2019-07-15 | 2019-07-16 |  | 33d | start no earlier than 2019-07-15 |
| 20 | 4.1.2.4 | 值机广播 | 2d | 2019-07-17 | 2019-07-18 |  | 31d | start no earlier than 2019-07-17 |
| 21 | 4.1.2.5 | 取消广播 | 2d | 2019-07-19 | 2019-07-22 |  | 29d | start no earlier than 2019-07-19 |
| 22 | 4.1.2.6 | 延误广播 | 2d | 2019-07-22 | 2019-07-23 |  | 28d | start no earlier than 2019-07-22 |
| 23 | 4.1.2.7 | 进港广播 | 2d | 2019-07-24 | 2019-07-25 |  | 26d | start no earlier than 2019-07-24 |
| 24 | 4.1.2.8 | 自动广播 | 5d | 2019-07-26 | 2019-08-01 |  | 21d | start no earlier than 2019-07-26 |
| 25 | 4.1.2.9 | 人工广播 | 2d | 2019-08-05 | 2019-08-06 |  | 18d | start no earlier than 2019-08-05 |
| 26 | 4.1.2.10 | 消防广播 | 3d | 2019-08-09 | 2019-08-13 |  | 13d | start no earlier than 2019-08-09 |

| ID | WBS | Task | Duration | Start | Finish | Predecessors | Total slack | Free slack | Constraint |
| --- | --- | --- | --- | --- | --- | --- | --- | --- | --- |
| 27 | 4.1.3 | **系统管理** | 10d | 2019-07-09 | 2019-07-22 |  |  |  |  |
| 28 | 4.1.3.1 | 广播设置 | 10d | 2019-07-15 | 2019-07-26 |  | 25d |  | start no earlier than 2019-07-15 |
| 29 | 4.1.3.2 | 区域设置 | 3d | 2019-07-15 | 2019-07-17 |  | 32d |  | start no earlier than 2019-07-15 |
| 30 | 4.1.3.3 | 设备管理 | 3d | 2019-07-15 | 2019-07-17 |  | 32d |  | start no earlier than 2019-07-15 |
| 31 | 4.1.3.4 | 语音片管理 | 3d | 2019-07-15 | 2019-07-17 |  | 32d |  | start no earlier than 2019-07-15 |
| 32 | 4.2 | **测试** | 10d | 2019-08-01 | 2019-08-14 |  | 12d |  |  |
| 33 | 4.2.1 | 单元测试 | 10d | 2019-08-01 | 2019-08-14 |  | 12d |  | finish no earlier than 2019-08-14 |
| 34 | 4.2.2 | 集成测试 | 10d | 2019-08-01 | 2019-08-14 |  | 12d |  | finish no earlier than 2019-08-14 |
| 35 | 4.2.3 | Bug修改 | 10d | 2019-08-01 | 2019-08-14 |  | 12d |  | finish no earlier than 2019-08-14 |
| 36 | 5 | **试运行** | 4d | 2019-08-12 | 2019-08-15 |  | 11d |  |  |
| 37 | 5.1 | 系统部署 | 1d | 2019-08-12 | 2019-08-12 |  | 12d | 0d | start no earlier than 2019-08-12 |
| 38 | 5.2 | 用户手册 | 2d | 2019-08-13 | 2019-08-14 | 37 | 12d |  |  |
| 39 | 5.3 | 系统试运行 | 4d | 2019-08-12 | 2019-08-15 |  | 11d |  | finish no earlier than 2019-08-15 |
| 40 | 6 | **项目验收及移交** | 12d | 2019-08-15 | 2019-08-30 |  |  |  |  |
| 41 | 6.1 | 项目验收 | 12d | 2019-08-15 | 2019-08-30 |  | 0d |  | finish no earlier than 2019-08-30 |
| 42 | 6.2 | 移交项目资料 | 1d | 2019-08-30 | 2019-08-30 |  | 0d |  | finish no earlier than 2019-08-30 |
